# TaskList

Schedule from MS Project, 2010-09-28 to 2010-12-31.
ABC

## Calendars

- Standard: Mon-Fri 08:00-12:00, 13:00-17:00; Sat-Sun off. Exceptions (off unless hours are given): 2010-10-02 to 2011-04-30 08:00-12:00, 13:00-17:00 (recurring).

## Resources

| Resource |
| --- |
| All members |
| Chính |
| Thảo |
| Long |
| Ly |
| Giang |

## Schedule

| ID | WBS | Task | Duration | Start | Finish | Predecessors | Total slack | Free slack | Constraint | Deadline | Resources | Work |
| --- | --- | --- | --- | --- | --- | --- | --- | --- | --- | --- | --- | --- |
| 1 | 1 | **A. MODULE A** | 95d? | 2010-09-28 | 2010-12-31 |  | -61d | 0d |  | 2010-10-31 |  | 984h |
| 2 | 1.1 | **1. BUSINESS ANALYSIS** | 20d? | 2010-10-04 | 2010-10-23 |  | -50d | 0d |  |  |  | 160h |
| 3 | 1.1.1 | 1.1 Understand Habubank's Documents | 12d? | 2010-10-04 | 2010-10-15 |  | -42d | 0d | finish no earlier than 2010-10-15 |  | All members | 96h |
| 4 | 1.1.2 | 1.2 Understand EPI's Document | 8d? | 2010-10-16 | 2010-10-23 |  | -50d | 0d | finish no earlier than 2010-10-23 |  | All members | 64h |
| 5 | 1.2 | **2. SYSTEM ANALYSIS** | 32d? | 2010-10-25 | 2010-11-25 | 2 | -51d | 0d |  |  |  | 824h |
| 6 | 1.2.1 | **2.1 ELICITATION** | 22d? | 2010-10-25 | 2010-11-15 |  | -41d | 0d |  |  |  | 824h |
| 7 | 1.2.1.1 | 2.1.0 Approach determination | 7d? | 2010-10-25 | 2010-10-31 |  | -26d | 0d | finish no earlier than 2010-10-31 |  | All members | 56h |
| 8 | 1.2.1.2 | 2.1.1 Account Management Module | 5d? | 2010-11-01 | 2010-11-05 |  | -31d | 0d | start no earlier than 2010-11-01 |  | Chính; Thảo | 80h |
| 9 | 1.2.1.3 | 2.1.2 Parameter Management Module | 12d? | 2010-10-25 | 2010-11-05 |  | -31d | 0d | finish no earlier than 2010-11-05 |  | Long; Ly; Giang | 288h |
| 10 | 1.2.1.4 | 2.1.3 Input Module | 5d? | 2010-11-06 | 2010-11-10 |  | -36d | 0d | finish no earlier than 2010-11-10 |  | Chính; Thảo | 80h |
| 11 | 1.2.1.5 | 2.1.4 Credit Ranking Module | 10d? | 2010-11-06 | 2010-11-15 |  | -41d | 0d | finish no earlier than 2010-11-15 |  | Long; Ly; Giang | 240h |
| 12 | 1.2.1.6 | 2.1.5 Reports Module | 5d? | 2010-11-11 | 2010-11-15 |  | -41d | 0d | finish no earlier than 2010-11-15 |  | Chính; Thảo | 80h |
| 13 | 1.2.2 | 2.2 ANALYSIS AND NEGOTIATION | 22d? | 2010-10-25 | 2010-11-15 |  | -51d | 0d | finish no earlier than 2010-11-15 |  |  |  |
| 14 | 1.2.3 | 2.3 VALIDATION | 5d? | 2010-11-16 | 2010-11-20 | 13 | -51d | 0d | finish no earlier than 2010-11-20 |  |  |  |
| 15 | 1.2.4 | 2.4 DESCRIBE REQUIREMENTS | 5d? | 2010-11-21 | 2010-11-25 | 14 | -51d | 0d | finish no earlier than 2010-11-25 |  |  |  |
| 16 | 1.3 | **3. SYSTEM DESIGN** | 20d? | 2010-11-26 | 2010-12-15 | 5 | -61d | 0d |  |  |  |  |
| 17 | 1.3.1 | 3.1 ARCHITECTURE DESIGN | 5d? | 2010-11-26 | 2010-11-30 |  | -51d | 0d | finish no earlier than 2010-11-30 |  |  |  |
| 18 | 1.3.2 | 3.2 ERD DESIGN | 5d? | 2010-12-01 | 2010-12-05 | 17 | -51d | 0d | finish no earlier than 2010-12-05 |  |  |  |
| 19 | 1.3.3 | 3.3 DETAILED DESIGN | 10d? | 2010-12-06 | 2010-12-15 |  | -61d | 0d | finish no earlier than 2010-12-15 |  |  |  |
| 20 | 1.4 | 4. IMPLEMENTATION | 10d? | 2010-12-16 | 2010-12-25 | 16 | -61d | 0d | start no earlier than 2010-12-16 |  |  |  |
| 21 | 1.5 | 5. TESTING | 6d? | 2010-12-26 | 2010-12-31 | 20 | -61d | 0d | finish no earlier than 2010-12-31 |  |  |  |
| 22 | 2 | B. MODULE B | 1d? | 2010-12-01 | 2010-12-01 |  | 30d |  | start no earlier than 2010-12-01 |  |  |  |
